# 综合--除春节

Schedule from MS Project, 2013-11-04 to 2014-07-04, A marks actual dates.

## Calendars

- 标准: Mon-Fri 08:00-12:00, 13:00-17:00; Sat-Sun off. Exceptions (off unless hours are given): 2014-01-27 to 2014-02-09 (春节).

## Resources

| Resource |
| --- |
| 邱显超 |
| 李言 |
| 范锦锋 |
| 支良 |
| 李志林 |
| 王磊 |
| 刘中昌 |
| 何颖醛 |
| 王瑛 |
| 韩程杰 |
| 韩呈杰 |
| 黄训旺 |

## Schedule

| ID | WBS | Task | Type | Duration | Start | Finish | Predecessors | Complete | Remaining | Total slack | Free slack | Constraint | Resources | Work | Actual work |
| --- | --- | --- | --- | --- | --- | --- | --- | --- | --- | --- | --- | --- | --- | --- | --- |
| 1 | 1 | **需求评审** |  | 9d? | 2013-11-22 | 2013-12-04 |  |  |  | 142d |  |  | 邱显超 | 112h |  |
| 2 | 1.1 | 市场调研 |  | 1d? | 2013-11-22 | 2013-11-22 |  |  |  | 150d |  |  |  |  |  |
| 3 | 1.2 | 立项报告 |  | 1d? | 2013-11-22 | 2013-11-22 |  |  |  | 150d |  |  |  |  |  |
| 4 | 1.3 | 产品需求规格书 |  | 5d | 2013-11-28 | 2013-12-04 |  |  |  | 142d |  | start no earlier than 2013-11-28 | 邱显超 | 40h |  |
| 5 | 2 | **系统开发** |  | 108d? | 2013-11-04 A | 2014-04-16 |  | 8% | 99.87d? | 57d |  |  |  | 5576h | 188.2h |
| 6 | 2.1 | **硬件平台搭建** |  | 93d? | 2013-11-25 A | 2014-04-16 |  | 21% | 73.48d? | 57d |  |  | 李言 | 1280h | 188.2h |
| 7 | 2.1.1 | **设计和测试标准化采集模块** |  | 35d? | 2013-11-25 A | 2014-01-10 |  | 41% | 20.49d? | 115d |  |  | 李言 | 280h | 32h |
| 8 | 2.1.1.1 | 修正原理图（基于DM368） |  | 4d? | 2013-11-25 A | 2013-11-28 A |  | 100% |  |  |  | start no earlier than 2013-11-25 |  |  |  |
| 9 | 2.1.1.2 | 绘制原理图 |  | 7d? | 2013-11-25 A | 2013-12-03 A |  | 100% |  |  |  | start no earlier than 2013-11-25 |  |  |  |
| 10 | 2.1.1.3 | 绘制PCB（368，传感器，转换板） |  | 6d? | 2013-12-04 A | 2013-12-11 A |  | 100% |  |  |  | start no earlier than 2013-12-04 |  |  |  |
| 11 | 2.1.1.4 | 调试DM368Boot |  | 9d? | 2013-12-13 | 2013-12-25 |  |  |  | 127d |  | finish no earlier than 2013-12-25 |  |  |  |
| 12 | 2.1.1.5 | PCB焊接 |  | 10d? | 2013-12-23 | 2014-01-03 |  |  |  | 120d |  | finish no earlier than 2014-01-03 |  |  |  |
| 13 | 2.1.1.6 | 电路板调试 |  | 5d? | 2014-01-06 | 2014-01-10 |  |  |  | 115d |  | finish no earlier than 2014-01-10 |  |  |  |
| 14 | 2.1.2 | 确定显示模块（含触摸）参数 |  | 20d? | 2013-12-02 | 2013-12-27 |  |  |  | 125d |  | finish no earlier than 2013-12-27 |  |  |  |
| 15 | 2.1.3 | **新嵌入式平台产品化（部件一体化）** |  | 32d? | 2013-12-02 | 2014-01-14 |  |  |  | 113d |  |  | 黄训旺 | 256h |  |
| 16 | 2.1.3.1 | 配合完成屏、控制器、wifi等功能测试 |  | 27d? | 2013-12-02 | 2014-01-07 |  |  |  | 118d |  | finish no earlier than 2014-01-07 |  |  |  |
| 17 | 2.1.3.2 | 一体化电路板绘制 |  | 10d? | 2013-12-12 | 2013-12-25 |  |  |  | 113d | 0d | finish no earlier than 2013-12-25 |  |  |  |
| 18 | 2.1.3.3 | PCB制板 |  | 4d? | 2013-12-26 | 2013-12-31 | 17 |  |  | 113d | 0d | finish no earlier than 2013-12-30 |  |  |  |
| 19 | 2.1.3.4 | PCB焊接 |  | 3d | 2014-01-01 | 2014-01-03 | 18 |  |  | 113d | 0d | finish no earlier than 2014-01-03 |  |  |  |
| 20 | 2.1.3.5 | 电路调试 |  | 7d | 2014-01-06 | 2014-01-14 | 19 |  |  | 113d |  | finish no earlier than 2014-01-14 |  |  |  |
| 21 | 2.1.4 | 硬件元器件定型，汇总元器件清单--里程碑 | milestone | 1d | 2013-12-20 A | 2013-12-20 A |  | 100% |  |  |  | start no earlier than 2013-12-20 |  |  |  |
| 22 | 2.1.5 | 提供软件开发所需的硬件平台V1--里程碑 | milestone | 20d | 2013-11-25 A | 2013-12-20 A |  | 100% |  |  |  | start no earlier than 2013-11-25 |  |  |  |
| 23 | 2.1.6 | 提供软件开发所需的硬件平台V2--里程碑 | milestone | 18d | 2013-12-20 | 2014-01-14 |  |  |  | 113d |  | finish no earlier than 2014-01-14 |  |  |  |
| 24 | 2.1.7 | 小批量生产（配合定型实验）--里程碑 |  | 30d | 2014-03-06 | 2014-04-16 |  |  |  | 57d |  | start no earlier than 2014-03-06 |  |  |  |

Notes:
- 1: 对IKEMBX00项目进行立项，补充各种文档
- 21: 需要在外观设计前基本确定，目标是： / 1. 确定元器件电气参数、电路板尺寸、接插件、连接方式，给出汇总表； / 2. 从硬件层面保证软件功能需求能够实现；
- 22: 1. 给出能独立运行，用于软件开发所需的，带全部硬件模块的硬件平台； / 2. 可以是工程样机，电路板尺寸可能会根据外观设计进行修改；
- 23: 1. 能独立运行，电路板、连接线连接方式和元器件尺寸符合外观和结构设计要求的硬件平台； / 2. 可以用于评估手板的安装方式、硬件接口的完备性； / 3. 可以验证手板的软件功能。
- 24: 通过原型机测试后，根据问题修改后进行小批量生产，用于配合定型实验。

| ID | WBS | Task | Duration | Start | Finish | Predecessors | Total slack | Free slack | Constraint | Resources | Work |
| --- | --- | --- | --- | --- | --- | --- | --- | --- | --- | --- | --- |
| 25 | 2.2 | **软件系统开发** | 105d | 2013-11-04 | 2014-04-11 |  | 60d |  |  | 范锦锋 | 4296h |
| 26 | 2.2.1 | 软件需求分析 | 1d | 2013-11-22 | 2013-11-22 |  | 150d |  |  |  |  |
| 27 | 2.2.2 | **第一轮迭代（基础模块开发）** | 50d | 2013-11-04 | 2014-01-10 |  | 115d |  |  |  | 1120h |
| 28 | 2.2.2.1 | **软件开发** | 45d | 2013-11-04 | 2014-01-03 |  | 115d | 0d |  |  | 920h |
| 29 | 2.2.2.1.1 | 算法逻辑 | 10d | 2013-12-09 | 2013-12-20 |  | 115d | 0d | start no earlier than 2013-12-09 | 李志林 | 80h |
| 30 | 2.2.2.1.2 | 串口通信模块 | 30d | 2013-11-04 | 2013-12-13 |  | 120d | 0d | start no earlier than 2013-11-04 | 王磊 | 240h |
| 31 | 2.2.2.1.3 | **UI模块** | 10d | 2013-12-16 | 2013-12-27 | 30 | 120d |  |  | 王磊 | 160h |
| 32 | 2.2.2.1.3.1 | 人员管理、部门管理 | 7d | 2013-12-16 | 2013-12-24 |  | 120d | 0d |  | 王磊 | 56h |
| 33 | 2.2.2.1.3.2 | 调用注册、识别模块 | 3d | 2013-12-25 | 2013-12-27 | 32 | 120d |  |  | 王磊 | 24h |
| 34 | 2.2.2.1.4 | 网络通信模块客户端 | 20d | 2013-12-03 | 2013-12-30 |  | 119d |  | finish no earlier than 2013-12-30 | 范锦锋 | 160h |
| 35 | 2.2.2.1.5 | USB通信模块 | 21d | 2013-11-29 | 2013-12-27 |  | 117d | 0d | start no earlier than 2013-11-29 | 刘中昌 | 168h |
| 36 | 2.2.2.1.6 | 识别模块基本应用部分 | 3d | 2013-12-30 | 2014-01-01 | 35 | 117d |  |  | 刘中昌 | 24h |
| 37 | 2.2.2.1.7 | 注册模块基本应用部分 | 10d | 2013-12-23 | 2014-01-03 | 29 | 115d |  | finish no earlier than 2013-12-31 | 李志林 | 80h |
| 38 | 2.2.2.1.8 | 软键盘输入 | 1d | 2013-11-22 | 2013-11-22 |  | 145d |  |  | 韩呈杰 | 8h |
| 39 | 2.2.2.2 | 第一轮系统联调--里程碑 | 5d | 2014-01-06 | 2014-01-10 | 28 | 115d |  |  | 范锦锋; 李志林; 刘中昌; 王磊; 王瑛 | 200h |
| 40 | 2.2.3 | **第二轮迭代开发（其余功能模块）** | 60d | 2013-12-23 | 2014-03-28 |  | 70d |  |  |  | 1696h |
| 41 | 2.2.3.1 | **软件开发** | 50d | 2013-12-23 | 2014-03-14 |  | 70d | 0d |  |  | 1216h |
| 42 | 2.2.3.1.1 | 数据规约 | 20d | 2013-12-23 | 2014-01-17 |  | 70d | 0d | start no earlier than 2013-12-23 | 何颖醛 | 160h |
| 43 | 2.2.3.1.2 | 主模块 | 3d | 2014-01-08 | 2014-01-10 |  | 105d |  | start no earlier than 2014-01-08 | 刘中昌 | 24h |
| 44 | 2.2.3.1.3 | 人机交互 | 5d | 2014-01-10 | 2014-01-16 |  | 94d | 0d | start no earlier than 2014-01-10 | 李志林 | 40h |
| 45 | 2.2.3.1.4 | 人脸摄像头模块 | 2d | 2014-01-17 | 2014-01-20 | 44 | 94d | 0d |  | 李志林 | 16h |
| 46 | 2.2.3.1.5 | **UI模块** | 9d | 2013-12-30 | 2014-01-09 |  | 106d |  |  | 王磊 | 72h |
| 47 | 2.2.3.1.5.1 | 人脸图像注册 | 9d | 2013-12-30 | 2014-01-09 |  | 106d |  | start no earlier than 2013-12-30 |  |  |
| 48 | 2.2.3.1.6 | 特征同步模块 | 25d | 2014-01-06 | 2014-02-21 |  | 85d |  | start no earlier than 2014-01-06 | 范锦锋 | 200h |
| 49 | 2.2.3.1.7 | 系统控制 | 16d | 2014-01-10 | 2014-02-14 |  | 70d | 0d | start no earlier than 2014-01-10 | 王磊 | 128h |
| 50 | 2.2.3.1.8 | XML模块 | 20d | 2014-02-17 | 2014-03-14 | 49 | 70d |  |  | 王磊 | 160h |
| 51 | 2.2.3.1.9 | 数据导入导出模块 | 12d | 2014-01-13 | 2014-02-11 |  | 93d |  | start no earlier than 2014-01-13 | 刘中昌 | 96h |
| 52 | 2.2.3.1.10 | 数据库模块 | 30d | 2014-01-20 | 2014-03-14 | 42 | 70d |  | start no earlier than 2014-01-20 | 何颖醛 | 240h |
| 53 | 2.2.3.1.11 | 注册和识别模块的剩余部分 | 5d | 2014-01-21 | 2014-02-10 | 45 | 94d |  |  | 李志林; 刘中昌 | 80h |
| 54 | 2.2.3.2 | 第二轮集成测试 | 10d | 2014-03-17 | 2014-03-28 | 41 | 70d |  |  | 范锦锋; 何颖醛; 刘中昌; 李志林; 王磊; 王瑛 | 480h |

Notes:
- 27: 完成所有基础模块，并且能将各个模块整合起来，完成基本功能。剩余一下细节需要修改 / 主要完成的功能点包括： / 1. 注册功能 / 2. 识别功能 / 3. 界面要完成，可以不实现除1，2外的其他功能
- 31: 1. 人员管理，CRUD 5/ 2. 部门管理，CRUD 2/ 3. 调注册、识别模块 3/ 4. 人脸图像注册
- 36: 1. UI实现识别功能，调用李志林的识别模块
- 37: 1. 注册界面的代码编写 / 2. 临时使用的代码编写
- 39: 完成第一轮的系统集成测试 / 实现的功能： / 1. 注册 / 2. 识别 / 3. 除1，2之外的功能可以不实现
- 43: 主模块指： / 界面中主页面的跳转的逻辑
- 44: 包括： / 1. 根据测距，进行红外灯控制； / 2. 声音提示； / 3. 红绿框显示等界面显示。
- 45: 需要李言提供一个摄像头示例。
- 48: 包括： / 1. 特征管理 / 2. 特征更新

| ID | WBS | Task | Type | Duration | Start | Finish | Predecessors | Total slack | Free slack | Constraint | Resources | Work |
| --- | --- | --- | --- | --- | --- | --- | --- | --- | --- | --- | --- | --- |
| 55 | 2.2.4 | **第三轮迭代开发（完成IKEMBX00需求定义的所有需求）** |  | 27d | 2014-02-10 | 2014-03-18 |  | 58d | 0d |  |  | 304h |
| 56 | 2.2.4.1 | **软件开发** |  | 27d | 2014-02-10 | 2014-03-18 |  | 58d |  |  |  | 304h |
| 57 | 2.2.4.1.1 | PC端网络通信模块 |  | 12d | 2014-03-03 | 2014-03-18 |  | 58d |  | start no earlier than 2014-03-03 | 范锦锋 | 96h |
| 58 | 2.2.4.1.2 | 通信业务管理模块 |  | 16d | 2014-02-25 | 2014-03-18 |  | 58d |  | start no earlier than 2014-02-25 | 刘中昌 | 128h |
| 59 | 2.2.4.1.3 | 日志模块 |  | 10d | 2014-02-10 | 2014-02-21 |  | 75d |  | start no earlier than 2014-02-10 | 韩呈杰 | 80h |
| 60 | 2.2.5 | 第三轮集成测试--里程碑 |  | 8d | 2014-03-19 | 2014-03-28 | 55 | 60d | 0d | finish no earlier than 2014-03-28 | 范锦锋; 韩呈杰; 刘中昌; 王瑛 | 256h |
| 61 | 2.2.6 | 测试部测试 |  | 10d | 2014-03-31 | 2014-04-11 | 60 | 60d |  |  | 王瑛 | 80h |
| 62 | 3 | **外观、结构、模具** |  | 88d? | 2014-02-10 | 2014-06-11 |  | 0d |  |  | 邱显超 | 704h |
| 63 | 3.1 | 外观设计 |  | 17d | 2014-02-10 | 2014-03-04 |  | 87d | 0d | start no earlier than 2014-02-10 |  |  |
| 64 | 3.2 | 3D外观模型--里程碑 | milestone | 1d? | 2014-03-05 | 2014-03-05 | 63 | 87d |  |  |  |  |
| 65 | 3.3 | 结构设计 |  | 36d | 2014-02-10 | 2014-03-31 |  | 0d |  | start no earlier than 2014-02-10 |  |  |
| 66 | 3.4 | 结构手板制作完成--里程碑 | milestone | 7d | 2014-04-01 | 2014-04-09 | 65 | 0d |  |  |  |  |
| 67 | 3.5 | 模具设计 |  | 44d | 2014-04-10 | 2014-06-10 | 66 | 0d |  |  |  |  |
| 68 | 3.6 | 模具T1完成--里程碑 | milestone | 1d | 2014-06-11 | 2014-06-11 | 67 | 17d |  |  |  |  |
| 69 | 3.7 | 包装设计 |  | 1d? | 2014-04-24 | 2014-04-24 | 71 | 50d | 0d |  |  |  |
| 70 | 3.8 | 包装设计文档--里程碑 |  | 1d? | 2014-04-25 | 2014-04-25 | 69 | 50d |  |  |  |  |
| 71 | 4 | **原型机测试（使用结构手板）** |  | 10d? | 2014-04-10 | 2014-04-23 |  | 8d | 0d |  | 邱显超 | 112h |
| 72 | 4.1 | 器件安装测试 |  | 4d | 2014-04-10 | 2014-04-15 | 66 | 8d | 0d |  | 支良 | 32h |
| 73 | 4.2 | 功能测试 |  | 5d | 2014-04-16 | 2014-04-22 | 72 | 8d | 0d |  |  |  |
| 74 | 4.3 | 功能测试报告--里程碑 | milestone | 1d? | 2014-04-23 | 2014-04-23 | 73 | 8d |  |  |  |  |
| 75 | 5 | **设计定型（使用模具生产出的小批量外壳）** |  | 13d | 2014-06-11 | 2014-06-27 |  | 0d |  |  | 支良 | 104h |
| 76 | 5.1 | 定型实验 |  | 10d | 2014-06-11 | 2014-06-24 | 67 | 0d |  |  |  |  |
| 77 | 5.2 | 定型实验报告--里程碑 | milestone | 3d | 2014-06-25 | 2014-06-27 | 76 | 0d |  |  |  |  |
| 78 | 6 | 转产评审 |  | 5d | 2014-06-30 | 2014-07-04 | 75 | 0d |  |  | 邱显超 | 40h |
| 79 | 7 | 说明书编写 |  | 22d | 2014-04-24 | 2014-05-23 | 71 | 30d |  |  | 王瑛 | 176h |
| 80 | 8 | 产品认证（CCC、CE）？？？ |  | 44d | 2014-04-24 | 2014-06-24 | 71 | 8d |  |  | 邱显超 | 352h |

Notes:
- 57: 网络通讯例程。 / 包括： / 1. 规约接口能实现有限几个进行测试 / 2. 特征网络更新实现简单版本
- 58: 包括： / 1. 数据调度 / 2. 根据规约来处理数据
- 60: 1. 完成IKEMBX00需求文档中定义的全部功能； / 2. 经过集成测试，基本稳定运行；
- 63: 含2014年春节假期
- 64: 设计公司提供3D设计图纸
- 65: 含春节假期
- 66: 手板公司提供外观手板和各种工艺文件； / 工艺应该与最终产品相同
- 68: 第一次试模
- 70: 给出包装设计文档
