# IKEMBX00

Schedule from MS Project, 2013-11-25 to 2014-04-21.

## Calendars

- 标准: Mon-Fri 08:00-12:00, 13:00-17:00; Sat-Sun off. Exceptions (off unless hours are given): 2014-01-30 to 2014-02-06 (春节).

## Resources

| Resource |
| --- |
| 李志林 |
| 刘中昌 |
| 王磊 |
| 范锦锋 |
| 何颖醛 |

## Schedule

| ID | WBS | Task | Duration | Start | Finish | Predecessors | Total slack | Free slack | Resources | Work |
| --- | --- | --- | --- | --- | --- | --- | --- | --- | --- | --- |
| 1 | 1 | **第一阶段** | 45d | 2013-11-25 | 2014-01-24 |  | 0d |  |  | 1480h |
| 2 | 1.1 | 算法逻辑 | 30d | 2013-11-25 | 2014-01-03 |  | 15d | 0d | 李志林 | 240h |
| 3 | 1.2 | USB模块 | 20d | 2013-11-25 | 2013-12-20 |  | 0d |  | 刘中昌 | 160h |
| 4 | 1.3 | 数据通信模块 | 25d | 2013-12-23 | 2014-01-24 | 3 | 0d |  | 刘中昌 | 200h |
| 5 | 1.4 | 串口通信模块 | 15d | 2013-11-25 | 2013-12-13 |  | 0d |  | 王磊 | 120h |
| 6 | 1.5 | 系统控制模块 | 25d | 2013-12-16 | 2014-01-17 | 5 | 0d |  | 王磊 | 200h |
| 7 | 1.6 | 规约文档 | 15d | 2013-11-25 | 2013-12-13 |  | 40d | 0d | 何颖醛 | 120h |
| 8 | 1.7 | 网络通信处理模块 | 20d | 2013-12-16 | 2014-01-10 | 7 | 40d | 0d | 何颖醛 | 160h |
| 9 | 1.8 | SOKCET设计编码 | 35d | 2013-11-25 | 2014-01-10 |  | 25d | 0d | 范锦锋 | 280h |
| 10 | 2 | **第二阶段** | 40d | 2014-01-06 | 2014-03-10 |  | 10d |  |  | 1040h |
| 11 | 2.1 | 注册模块 | 35d | 2014-01-06 | 2014-03-03 | 2 | 15d | 0d | 李志林 | 280h |
| 12 | 2.2 | 识别和主模块 | 25d | 2014-01-27 | 2014-03-10 | 4 | 0d |  | 刘中昌 | 200h |
| 13 | 2.3 | UI编码控制 | 20d | 2014-01-20 | 2014-02-24 | 6 | 0d |  | 王磊 | 160h |
| 14 | 2.4 | 数据库模块 | 25d | 2014-01-13 | 2014-02-24 | 8 | 40d |  | 何颖醛 | 200h |
| 15 | 2.5 | 特征更新模块 | 25d | 2014-01-13 | 2014-02-24 | 9 | 25d | 0d | 范锦锋 | 200h |
| 16 | 3 | **第三阶段** | 40d | 2014-02-25 | 2014-04-21 |  | 0d |  |  | 840h |
| 17 | 3.1 | 图像读写 | 20d | 2014-03-04 | 2014-03-31 | 11 | 15d |  | 李志林 | 160h |
| 18 | 3.2 | 文件读写 | 10d | 2014-03-11 | 2014-03-24 | 12 | 0d |  | 刘中昌 | 80h |
| 19 | 3.3 | 数据导入导出 | 20d | 2014-03-25 | 2014-04-21 | 18 | 0d |  | 刘中昌 | 160h |
| 20 | 3.4 | XML模块 | 20d | 2014-02-25 | 2014-03-24 | 13 | 0d |  | 王磊 | 160h |
| 21 | 3.5 | 日志模块 | 20d | 2014-03-25 | 2014-04-21 | 20 | 0d |  | 王磊 | 160h |
| 22 | 3.6 | PC服务端例程 | 15d | 2014-02-25 | 2014-03-17 | 15 | 25d |  | 范锦锋 | 120h |
